# IST645F20A2BDONGAREN

Schedule from MS Project, 2020-09-08 to 2021-07-28, 5 hours a day, costs in $.

## Calendars

- Standard: Mon-Fri 08:00-12:00, 13:00-17:00; Sat-Sun off. Exceptions (off unless hours are given): 2020-11-01 08:00-12:00, 13:00-17:00, 2020-11-11 (Veterans Day), 2020-11-26 (Thanksgiving Day), 2020-12-25 (Christmas Day).

## Resources

| Resource | Rate |
| --- | --- |
| Nikita Dongare | 42 |
| Rayshon Thompson | 32 |
| John Swenny | 38 |
| Mia Bolivar | 40 |
| Arlene Bradshaw | 37 |
| Yuqin Luo | 32 |
| Naina Shukla | 36 |
| Faythe Scheidecker | 28 |
| John Sigma | 25 |
| Ricardo McGathey | 25 |
| Adam Alberts |  |
| Amy Holland |  |
| Tony Darin |  |
| Craig Holland |  |
| Paulo Maina |  |
| Sonya Hernandez |  |
| Akeem Bakir |  |
| Package Atlas Labels RFID Roll | 204 |
| Zebra ZD500R RFID Printer | 2033 |
| Seagull Scientific Printer Software Enterprise License | 2095 |
| Vehicular RFID/Cellular Gateway Reader | 2073 |
| Handheld RFID Bluetooth Reader | 1609 |
| Enterprise Software License - Initial Amount on signing contract | 6395 |
| Enterprise Software License -Payment upon completing testing | 10000 |
| Enterprise Software License - Final Payment upon completing fleet rollout | 15000 |

## Schedule

| ID | WBS | Task | Duration | Start | Finish | Predecessors | Total slack | Free slack | Resources | Work | Cost |
| --- | --- | --- | --- | --- | --- | --- | --- | --- | --- | --- | --- |
| 1 | 1 | **Project Initiation** | 39.5d | 2020-09-08 | 2020-10-12 |  | 4.1d |  |  | 147.5h | 10,367.12 |
| 2 | 1.1 | **Understanding and creating the business case** | 5d | 2020-09-08 | 2020-09-11 |  | 4.1d |  |  | 21h | 756 |
| 3 | 1.1.1 | Understanding the business case | 2d | 2020-09-08 | 2020-09-09 |  | 4.1d | 0d | Nikita Dongare [80%] | 8h | 336 |
| 4 | 1.1.2 | Creating the business case | 2d | 2020-09-09 | 2020-09-10 | 3 | 4.1d | 0d | Nikita Dongare | 10h | 420 |
| 5 | 1.1.3 | Business case approval | 1d | 2020-09-10 | 2020-09-11 | 4 | 4.1d | 0d | Adam Alberts [20%]; Craig Holland [20%]; Tony Darin [20%] | 3h |  |
| 6 | 1.2 | Identifying stakeholders and team members | 1d | 2020-09-11 | 2020-09-11 | 5 | 361.56d |  | Adam Alberts [25%]; Nikita Dongare [25%]; Paulo Maina [25%]; Tony Darin [25%] | 5h | 52.5 |
| 7 | 1.3 | **Introductory meetings** | 4d | 2020-09-11 | 2020-09-15 |  | 4.1d |  |  | 10h | 213.12 |
| 8 | 1.3.1 | Meeting with stakeholders | 2d | 2020-09-11 | 2020-09-14 | 5 | 4.1d | 0d | Adam Alberts [8.3%]; Amy Holland [8.3%]; Craig Holland [8.3%]; Nikita Dongare [8.3%]; Paulo Maina [8.3%]; Tony Darin [8.3%] | 5h | 35 |
| 9 | 1.3.2 | Meeting with the team members | 2d | 2020-09-14 | 2020-09-15 | 8 | 4.1d | 0d | Arlene Bradshaw [6.2%]; Faythe Scheidecker [6.2%]; John Swenny [6.2%]; Mia Bolivar [6.2%]; Naina Shukla [6.2%]; Nikita Dongare [6.2%]; Rayshon Thompson [6.2%]; Yuqin Luo [6.2%] | 5h | 178.12 |
| 10 | 1.4 | **Requirement gathering and analysis** | 7d | 2020-09-15 | 2020-09-22 |  | 4.1d |  |  | 36h | 812 |
| 11 | 1.4.1 | Meeting with stakeholders for requirement gathering | 3d | 2020-09-15 | 2020-09-17 | 9 | 4.1d | 0d | Adam Alberts [22.2%]; Amy Holland [22.2%]; Craig Holland [22.2%]; Nikita Dongare [22.2%]; Paulo Maina [22.2%]; Tony Darin [22.2%] | 20h | 140 |
| 12 | 1.4.2 | Document stakeholder interviews | 2d | 2020-09-17 | 2020-09-18 | 11 | 4.1d | 0d | Nikita Dongare [60%] | 6h | 252 |
| 13 | 1.4.3 | Analyze and create requirements document | 2d | 2020-09-21 | 2020-09-22 | 11, 12 | 4.1d | 0d | Nikita Dongare | 10h | 420 |
| 14 | 1.5 | **Project Charter development** | 9d | 2020-09-22 | 2020-09-29 |  | 4.1d |  |  | 35h | 1,470 |
| 15 | 1.5.1 | Define business case | 2d | 2020-09-22 | 2020-09-23 | 13 | 4.1d | 0d | Nikita Dongare [50%] | 5h | 210 |
| 16 | 1.5.2 | Define high level project scope | 1d | 2020-09-23 | 2020-09-24 | 15 | 4.1d | 0d | Nikita Dongare | 5h | 210 |
| 17 | 1.5.3 | Create an outline of project deliverables | 1d | 2020-09-24 | 2020-09-24 | 16 | 4.1d | 0d | Nikita Dongare | 5h | 210 |
| 18 | 1.5.4 | Create project charter | 5d | 2020-09-24 | 2020-09-29 | 17 | 4.1d | 0d | Nikita Dongare [80%] | 20h | 840 |
| 19 | 1.6 | **Project Charter approval** | 5.5d | 2020-09-29 | 2020-10-05 |  | 4.1d |  |  | 21.5h | 640.5 |
| 20 | 1.6.1 | Review the charter | 1d | 2020-09-29 | 2020-09-30 | 18 | 4.1d | 0d | Adam Alberts [20%]; Amy Holland [20%]; Craig Holland [20%]; Paulo Maina [20%]; Tony Darin [20%] | 5h |  |
| 21 | 1.6.2 | Rework if changes are required | 4d | 2020-09-30 | 2020-10-02 | 20 | 4.1d | 0d | Nikita Dongare [75%] | 15h | 630 |
| 22 | 1.6.3 | Project Charter Approval and Sign off by stakeholders | 0.5d | 2020-10-05 | 2020-10-05 | 21 | 4.1d | 0d | Adam Alberts [10%]; Amy Holland [10%]; Craig Holland [10%]; Nikita Dongare [10%]; Paulo Maina [10%]; Tony Darin [10%] | 1.5h | 10.5 |
| 23 | 1.7 | **Legal undertakings** | 9d | 2020-10-05 | 2020-10-12 |  | 4.1d |  |  | 19h | 6,423 |
| 24 | 1.7.1 | Draft a contract between Reliable and Hardcat | 8d | 2020-10-05 | 2020-10-12 | 22 | 4.1d | 0d | Adam Alberts [7.5%]; Amy Holland [7.5%]; Craig Holland [7.5%]; Paulo Maina [7.5%]; Tony Darin [7.5%] | 15h |  |
| 25 | 1.7.2 | Contract approval and signoff by stakeholders | 1d | 2020-10-12 | 2020-10-12 | 24 | 4.34d | 0d | Adam Alberts [13.3%]; Amy Holland [13.3%]; Craig Holland [13.3%]; Nikita Dongare [13.3%]; Paulo Maina [13.3%]; Tony Darin [13.3%]; Enterprise Software License - Initial Amount on signing contract | 4h | 6,423 |

| ID | WBS | Task | Duration | Start | Finish | Predecessors | Total slack | Free slack | Constraint | Resources | Work | Cost |
| --- | --- | --- | --- | --- | --- | --- | --- | --- | --- | --- | --- | --- |
| 26 | 2 | **Project Planning** | 60.82d | 2020-10-12 | 2020-12-04 |  | 4.1d |  |  |  | 240.67h | 8,011.57 |
| 27 | 2.1 | **Conduct meeting with Sonya Hernandez** | 8d | 2020-10-12 | 2020-10-19 |  | 4.1d |  |  |  | 27.67h | 581 |
| 28 | 2.1.1 | Gather and analyze requirements | 2d | 2020-10-12 | 2020-10-14 | 25 | 4.1d | 0d |  | Nikita Dongare [30%]; Sonya Hernandez [30%] | 6h | 126 |
| 29 | 2.1.2 | Review the project charter with Sonya Hernandez | 1d | 2020-10-14 | 2020-10-14 | 28 | 4.1d | 0d |  | Nikita Dongare [50%]; Sonya Hernandez [50%] | 5h | 105 |
| 30 | 2.1.3 | Add new requirements if needed | 2d | 2020-10-15 | 2020-10-16 | 29FS+1d | 4.1d | 0d |  | Nikita Dongare [33.3%]; Sonya Hernandez [33.3%] | 6.67h | 140 |
| 31 | 2.1.4 | Identify resources required based on requirements | 2d | 2020-10-16 | 2020-10-19 | 30 | 4.1d | 0d |  | Nikita Dongare [50%]; Sonya Hernandez [50%] | 10h | 210 |
| 32 | 2.2 | Kickoff meeting with the team for project planning | 2d | 2020-10-20 | 2020-10-21 | 31FS+1d | 4.1d | 0d |  | Arlene Bradshaw [7.1%]; John Swenny [7.1%]; Mia Bolivar [7.1%]; Naina Shukla [7.1%]; Nikita Dongare [7.1%]; Rayshon Thompson [7.1%]; Yuqin Luo [7.1%]; Faythe Scheidecker [50%] | 10h | 323.57 |
| 33 | 2.3 | **Executive Overview** | 17.41d | 2020-10-22 | 2020-11-05 |  | 0d |  |  |  | 44h | 1,704 |
| 34 | 2.3.1 | Identify major points for presentation | 5d | 2020-10-22 | 2020-10-27 | 32FS+1d | 4.1d | 0d |  | Nikita Dongare [80%] | 20h | 840 |
| 35 | 2.3.2 | Create draft for executive overview presentation | 3d | 2020-10-27 | 2020-10-29 | 34 | 4.1d | 2.9d |  | Nikita Dongare | 15h | 630 |
| 36 | 2.3.3 | Send the excecutive overview draft for approval to Adam Alberts | 0.2d | 2020-11-01 | 2020-11-01 | 35 | 1.2d | 0d | start no earlier than 2020-11-01 | Nikita Dongare | 1h | 42 |
| 37 | 2.3.4 | Rework the executive overview if needed | 4d | 2020-11-02 | 2020-11-04 | 36FS+1d | 1.2d |  |  | Nikita Dongare [20%] | 4h | 168 |
| 38 | 2.3.5 | Final presentation to the executive board members and other stakeholders | 0.11d | 2020-11-05 | 2020-11-05 | 37 | 0d |  | start no earlier than 2020-11-05 | Adam Alberts; Amy Holland; Craig Holland; Nikita Dongare; Paulo Maina; Sonya Hernandez; Tony Darin | 4h | 24 |
| 39 | 2.4 | **Develop a Resource management plan** | 6.6d | 2020-11-05 | 2020-11-12 |  | 0d |  |  |  | 32h | 840 |
| 40 | 2.4.1 | Identify the resources needed | 2d | 2020-11-05 | 2020-11-06 | 38 | 0d |  |  | Nikita Dongare [40%]; Sonya Hernandez [40%] | 8h | 168 |
| 41 | 2.4.2 | Define roles and responsibilities of project team members | 2d | 2020-11-05 | 2020-11-06 | 38 | 1d |  |  | Nikita Dongare [50%] | 5h | 210 |
| 42 | 2.4.3 | Define roles and responsibilities of key stakeholders | 1d | 2020-11-06 | 2020-11-09 | 40 | 0d |  |  | Nikita Dongare | 5h | 210 |
| 43 | 2.4.4 | Meeting with Sonya to coordinate and finalize the resource allocation | 0.8d | 2020-11-09 | 2020-11-09 | 40, 41, 42 | 0d |  |  | Nikita Dongare [50%]; Sonya Hernandez [50%] | 4h | 84 |
| 44 | 2.4.5 | Develop a resource management plan | 2.4d | 2020-11-09 | 2020-11-12 | 43 | 0d |  |  | Nikita Dongare [33.3%]; Sonya Hernandez [33.3%] | 8h | 168 |
| 45 | 2.4.6 | Approval of the resource management plan | 0.4d | 2020-11-12 | 2020-11-12 | 44 | 0d |  |  | Adam Alberts | 2h |  |
| 46 | 2.5 | **Develop a Project schedule plan** | 7.1d | 2020-11-12 | 2020-11-18 |  | 2d |  |  |  | 36h | 1,302 |
| 47 | 2.5.1 | **Create WBS** | 3.9d | 2020-11-12 | 2020-11-16 |  | 288.14d |  |  |  | 13h | 546 |
| 48 | 2.5.1.1 | Define all activities and efforts required | 2.4d | 2020-11-12 | 2020-11-13 | 45 | 288.14d | 0d |  | Nikita Dongare [66.7%] | 8h | 336 |
| 49 | 2.5.1.2 | Determine task dependencies using predecessors | 1.5d | 2020-11-13 | 2020-11-16 | 48 | 288.14d |  |  | Nikita Dongare [66.7%] | 5h | 210 |
| 50 | 2.5.2 | Set major milestones and approval points | 1d | 2020-11-13 | 2020-11-16 | 45FS+2d | 0d |  |  | Nikita Dongare | 5h | 210 |
| 51 | 2.5.3 | Allocation of tasks to the team members | 1d | 2020-11-16 | 2020-11-17 | 50FS+1d | 0d |  |  | Nikita Dongare | 5h | 210 |
| 52 | 2.5.4 | Review of project schedule plan | 0.2d | 2020-11-17 | 2020-11-17 | 51 | 0d |  |  | Adam Alberts; Amy Holland | 2h |  |
| 53 | 2.5.5 | Rework the plan if needed | 1.6d | 2020-11-17 | 2020-11-18 | 52 | 0d |  |  | Nikita Dongare | 8h | 336 |
| 54 | 2.5.6 | Approval of project schedule plan | 0.3d | 2020-11-18 | 2020-11-18 | 53 | 0d |  |  | Adam Alberts; Amy Holland | 3h |  |

| ID | WBS | Task | Duration | Start | Finish | Predecessors | Total slack | Resources | Work | Cost |
| --- | --- | --- | --- | --- | --- | --- | --- | --- | --- | --- |
| 55 | 2.6 | **Develop a Budget plan** | 4.8d | 2020-11-18 | 2020-11-23 |  | 0d |  | 21h | 798 |
| 56 | 2.6.1 | Analyze the resource requirement | 1d | 2020-11-18 | 2020-11-19 | 54 | 0d | Nikita Dongare [120%] | 6h | 252 |
| 57 | 2.6.2 | Assign estimated cost for each resource | 1d | 2020-11-20 | 2020-11-20 | 56FS+1d | 0d | Nikita Dongare | 5h | 210 |
| 58 | 2.6.3 | Create a budget plan | 1.6d | 2020-11-20 | 2020-11-23 | 57 | 0d | Nikita Dongare | 8h | 336 |
| 59 | 2.6.4 | Approval of Budget plan | 0.2d | 2020-11-23 | 2020-11-23 | 58 | 0d | Adam Alberts; Amy Holland | 2h |  |
| 60 | 2.7 | **Develop a Risk management plan** | 6.85d | 2020-11-23 | 2020-12-01 |  | 0d |  | 30h | 1,176 |
| 61 | 2.7.1 | Identify potential system and operational risks | 2d | 2020-11-23 | 2020-11-25 | 59 | 0d | Nikita Dongare [40%] | 4h | 168 |
| 62 | 2.7.2 | Establish risk mitigation plans for potential risks | 1.25d | 2020-11-25 | 2020-11-25 | 61 | 0d | Nikita Dongare [80%] | 5h | 210 |
| 63 | 2.7.3 | Evaluate the cause and impact of risks | 0.6d | 2020-11-23 | 2020-11-24 | 61SS | 2.65d | Nikita Dongare | 3h | 126 |
| 64 | 2.7.4 | Document risk prioritization and mitigation guidelines | 1d | 2020-11-25 | 2020-11-27 | 61, 62, 63 | 0d | Nikita Dongare | 5h | 210 |
| 65 | 2.7.5 | Document risk assesment for schedule and budget baselines | 0.83d | 2020-11-30 | 2020-11-30 | 64FS+1d | 274.06d | Nikita Dongare [120%] | 5h | 210 |
| 66 | 2.7.6 | Create budget for residual risks | 1.2d | 2020-11-30 | 2020-11-30 | 64FS+1d | 0d | Nikita Dongare | 6h | 252 |
| 67 | 2.7.7 | Approval of Risk Management plan | 0.4d | 2020-11-30 | 2020-12-01 | 66 | 273.3d | Adam Alberts | 2h |  |
| 68 | 2.8 | **Change control plan** | 1.6d | 2020-11-30 | 2020-12-01 |  | 0d |  | 12h | 420 |
| 69 | 2.8.1 | Document change control procedure for approved scope baseline | 0.5d | 2020-11-30 | 2020-11-30 | 66SS | 274.39d | Nikita Dongare [160%] | 4h | 168 |
| 70 | 2.8.2 | Document change controls for triggers in budget and schedule | 1.2d | 2020-11-30 | 2020-11-30 | 66SS | 0d | Nikita Dongare | 6h | 252 |
| 71 | 2.8.3 | Appproval of Change control plan | 0.4d | 2020-11-30 | 2020-12-01 | 70 | 0d | Adam Alberts | 2h |  |
| 72 | 2.9 | **Project implementation plan** | 5.06d | 2020-12-01 | 2020-12-04 |  | 0d |  | 28h | 867 |
| 73 | 2.9.1 | Meeting with team members to discuss implementation | 2d | 2020-12-01 | 2020-12-03 | 71FS+1d | 0d | Arlene Bradshaw [12.5%]; Faythe Scheidecker [12.5%]; John Swenny [12.5%]; Mia Bolivar [12.5%]; Naina Shukla [12.5%]; Nikita Dongare [12.5%]; Rayshon Thompson [12.5%]; Yuqin Luo [12.5%] | 10h | 356.25 |
| 74 | 2.9.2 | Outline an initial implementation plan | 1.6d | 2020-12-03 | 2020-12-04 | 73 | 0d | Arlene Bradshaw [12.5%]; Faythe Scheidecker [12.5%]; John Swenny [12.5%]; Mia Bolivar [12.5%]; Naina Shukla [12.5%]; Nikita Dongare [12.5%]; Rayshon Thompson [12.5%]; Yuqin Luo [12.5%] | 8h | 285 |
| 75 | 2.9.3 | Implementation plan presentation to stakeholders | 0.06d | 2020-12-04 | 2020-12-04 | 74 | 0d | Nikita Dongare; Adam Alberts; Amy Holland; Craig Holland; Paulo Maina; Sonya Hernandez; Tony Darin | 2h | 12 |
| 76 | 2.9.4 | Rework if changes are needed | 1.2d | 2020-12-04 | 2020-12-04 | 75 | 0d | Arlene Bradshaw [12.5%]; Faythe Scheidecker [12.5%]; John Swenny [12.5%]; Mia Bolivar [12.5%]; Naina Shukla [12.5%]; Nikita Dongare [12.5%]; Rayshon Thompson [12.5%]; Yuqin Luo [12.5%] | 6h | 213.75 |
| 77 | 2.9.5 | Project plan approval from the stakeholders | 0.2d | 2020-12-04 | 2020-12-04 | 76 | 0d | Adam Alberts [40%]; Amy Holland [40%]; Craig Holland [40%]; Paulo Maina [40%]; Tony Darin [40%] | 2h |  |
| 78 | 3 | **Project procurement plan for hardware/ software resources** | 9.2d | 2020-12-04 | 2020-12-14 |  | 0d |  | 46h | 39,510 |
| 79 | 3.1 | **Meeting with Hardcat to determine the resource requirements for initial implementation** | 1d | 2020-12-04 | 2020-12-07 |  | 0d |  | 5h | 37,788 |
| 80 | 3.1.1 | Determine the quantity of RFID labels required | 1d | 2020-12-04 | 2020-12-07 | 77 | 266.24d | Package Atlas Labels RFID Roll [200%]; Nikita Dongare [10%]; Sonya Hernandez [10%] | 1h | 429 |
| 81 | 3.1.2 | Decide the type of RFID label printer | 1d | 2020-12-04 | 2020-12-07 | 77 | 266.24d | Nikita Dongare [10%]; Sonya Hernandez [10%]; Zebra ZD500R RFID Printer | 1h | 2,054 |
| 82 | 3.1.3 | Determine the software required for the RFID label printer | 1d | 2020-12-04 | 2020-12-07 | 77 | 266.24d | Nikita Dongare [10%]; Seagull Scientific Printer Software Enterprise License; Sonya Hernandez [10%] | 1h | 2,116 |
| 83 | 3.1.4 | Finalize the quantity of vehicle RFID readers for initial trial | 1d | 2020-12-04 | 2020-12-07 | 77 | 266.24d | Nikita Dongare [10%]; Sonya Hernandez [10%]; Vehicular RFID/Cellular Gateway Reader [1600%] | 1h | 33,189 |
| 84 | 3.1.5 | Determine backup resources for initial trial | 1d | 2020-12-04 | 2020-12-07 | 77 | 0d |  | 1h |  |
| 85 | 3.2 | Identify a list of potential vendors for RFID materials | 1.6d | 2020-12-07 | 2020-12-08 | 84 | 0d | Nikita Dongare | 8h | 336 |
| 86 | 3.3 | Create a document for comparitive study of vendors based on different factors | 1.6d | 2020-12-08 | 2020-12-09 | 85 | 0d | Nikita Dongare | 8h | 336 |
| 87 | 3.4 | Get a quote for the resources from each vendor | 3d | 2020-12-09 | 2020-12-11 | 86 | 0d | Nikita Dongare | 15h | 630 |
| 88 | 3.5 | Finalize the vendor considering budget constraints as well as quality of resources | 1d | 2020-12-11 | 2020-12-14 | 87 | 0d | Nikita Dongare | 5h | 210 |
| 89 | 3.6 | Procure the desired quantity of hardware and software | 1d | 2020-12-14 | 2020-12-14 | 88 | 0d | Nikita Dongare | 5h | 210 |

| ID | WBS | Task | Duration | Start | Finish | Predecessors | Total slack | Resources | Work | Cost |
| --- | --- | --- | --- | --- | --- | --- | --- | --- | --- | --- |
| 90 | 4 | **Training** | 35.03d | 2020-12-14 | 2021-01-14 |  | 0d |  | 96h | 2,871.95 |
| 91 | 4.1 | **Technical training to Reliable's project team and trainer Faythe Scheidecker by Hardcat** | 7d | 2020-12-14 | 2020-12-21 |  | 0d |  | 24h | 855.95 |
| 92 | 4.1.1 | Training overview session by Hardcat | 1d | 2020-12-14 | 2020-12-15 | 89 | 0d | Arlene Bradshaw [7.5%]; Faythe Scheidecker [7.5%]; John Swenny [7.5%]; Mia Bolivar [7.5%]; Naina Shukla [7.5%]; Nikita Dongare [7.5%]; Rayshon Thompson [7.5%]; Yuqin Luo [7.5%] | 3h | 106.88 |
| 93 | 4.1.2 | Organize the resources required for training | 1d | 2020-12-15 | 2020-12-15 | 92 | 0d | Arlene Bradshaw [2.5%]; Faythe Scheidecker [2.5%]; John Swenny [2.5%]; Mia Bolivar [2.5%]; Naina Shukla [2.5%]; Nikita Dongare [2.5%]; Rayshon Thompson [2.5%]; Yuqin Luo [2.5%] | 1h | 35.62 |
| 94 | 4.1.3 | Distribute the required training materials | 0.01d | 2020-12-15 | 2020-12-15 | 93 | 0d | Arlene Bradshaw; Faythe Scheidecker; John Swenny; Mia Bolivar; Naina Shukla; Nikita Dongare; Rayshon Thompson; Yuqin Luo | 0.2h | 7.12 |
| 95 | 4.1.4 | Conduct basic training session | 1d | 2020-12-15 | 2020-12-16 | 94 | 0d | Arlene Bradshaw [15%]; Faythe Scheidecker [15%]; John Swenny [15%]; Mia Bolivar [15%]; Naina Shukla [15%]; Nikita Dongare [15%]; Rayshon Thompson [15%]; Yuqin Luo [15%] | 6h | 213.75 |
| 96 | 4.1.5 | Provide hands on training experience for handling hardware equipments | 1d | 2020-12-16 | 2020-12-17 | 95 | 0d | Arlene Bradshaw [20%]; Faythe Scheidecker [20%]; John Swenny [20%]; Mia Bolivar [20%]; Naina Shukla [20%]; Nikita Dongare [20%]; Rayshon Thompson [20%]; Yuqin Luo [20%] | 8h | 285 |
| 97 | 4.1.6 | Provide training for usage of Hardcat software | 1d | 2020-12-17 | 2020-12-17 | 96 | 0d | Faythe Scheidecker [8.3%]; John Swenny [8.3%]; Mia Bolivar [8.3%]; Naina Shukla [8.3%]; Nikita Dongare [8.3%]; Rayshon Thompson [8.3%]; Yuqin Luo [8.3%]; Arlene Bradshaw [22.1%] | 4h | 143.45 |
| 98 | 4.1.7 | Monitor and evaluate the training | 1d | 2020-12-17 | 2020-12-18 | 97 | 0d | Arlene Bradshaw [0.8%]; Faythe Scheidecker [0.8%]; John Swenny [0.8%]; Mia Bolivar [0.8%]; Naina Shukla [0.8%]; Nikita Dongare [0.8%]; Rayshon Thompson [0.8%]; Yuqin Luo [0.8%] | 0.3h | 10.69 |
| 99 | 4.1.8 | Conduct a query session | 0.5d | 2020-12-18 | 2020-12-18 | 98 | 0d | Arlene Bradshaw [5%]; Faythe Scheidecker [5%]; John Swenny [5%]; Mia Bolivar [5%]; Naina Shukla [5%]; Nikita Dongare [5%]; Rayshon Thompson [5%]; Yuqin Luo [5%] | 1h | 35.62 |
| 100 | 4.1.9 | Document the training session and feedback | 0.5d | 2020-12-18 | 2020-12-21 | 99 | 0d | Arlene Bradshaw [2.5%]; Faythe Scheidecker [2.5%]; John Swenny [2.5%]; Mia Bolivar [2.5%]; Naina Shukla [2.5%]; Nikita Dongare [2.5%]; Rayshon Thompson [2.5%]; Yuqin Luo [2.5%] | 0.5h | 17.81 |
| 101 | 4.2 | **Technical training to drivers other employees by Faythe Scheidecker** | 27.03d | 2020-12-21 | 2021-01-14 |  | 0d |  | 72h | 2,016 |
| 102 | 4.2.1 | **Training Class 1** | 9.01d | 2020-12-21 | 2020-12-30 |  | 0d |  | 24h | 672 |
| 103 | 4.2.1.1 | Training overview session by Faythe Scheidecker | 1d | 2020-12-21 | 2020-12-22 | 100FS+1d | 0d | Faythe Scheidecker [60%] | 3h | 84 |
| 104 | 4.2.1.2 | Organize the resources required for training | 1d | 2020-12-22 | 2020-12-22 | 103 | 0d | Faythe Scheidecker [20%] | 1h | 28 |
| 105 | 4.2.1.3 | Distribute the required training materials | 0.01d | 2020-12-22 | 2020-12-22 | 104 | 0d | Faythe Scheidecker [400%] | 0.2h | 5.6 |
| 106 | 4.2.1.4 | Conduct basic training session | 1d | 2020-12-22 | 2020-12-23 | 105 | 0d | Faythe Scheidecker [120%] | 6h | 168 |
| 107 | 4.2.1.5 | Provide hands on training experience for handling hardware equipments | 1d | 2020-12-24 | 2020-12-24 | 106FS+1d | 0d | Faythe Scheidecker [160%] | 8h | 224 |
| 108 | 4.2.1.6 | Provide training for usage of Hardcat software | 1d | 2020-12-28 | 2020-12-29 | 107FS+1d | 0d | Faythe Scheidecker [80%] | 4h | 112 |
| 109 | 4.2.1.7 | Monitor training progress for each driver/ employee | 1d | 2020-12-29 | 2020-12-29 | 108 | 0d | Faythe Scheidecker [6%] | 0.3h | 8.4 |
| 110 | 4.2.1.8 | Conduct a query session | 0.5d | 2020-12-29 | 2020-12-30 | 109 | 0d | Faythe Scheidecker [40%] | 1h | 28 |
| 111 | 4.2.1.9 | Document the training session and feedback | 0.5d | 2020-12-30 | 2020-12-30 | 110 | 0d | Faythe Scheidecker [20%] | 0.5h | 14 |
| 112 | 4.2.2 | **Training Class 2** | 8.01d | 2020-12-30 | 2021-01-06 |  | 0d |  | 24h | 672 |
| 113 | 4.2.2.1 | Training overview session by Faythe Scheidecker | 1d | 2020-12-30 | 2020-12-30 | 111 | 0d | Faythe Scheidecker [60%] | 3h | 84 |
| 114 | 4.2.2.2 | Organize the resources required for training | 1d | 2020-12-30 | 2020-12-31 | 113 | 0d | Faythe Scheidecker [20%] | 1h | 28 |
| 115 | 4.2.2.3 | Distribute the required training materials | 0.01d | 2020-12-31 | 2020-12-31 | 114 | 0d | Faythe Scheidecker [400%] | 0.2h | 5.6 |
| 116 | 4.2.2.4 | Conduct basic training session | 1d | 2020-12-31 | 2021-01-01 | 115 | 0d | Faythe Scheidecker [120%] | 6h | 168 |
| 117 | 4.2.2.5 | Provide hands on training experience for handling hardware equipments | 1d | 2021-01-01 | 2021-01-04 | 116FS+1d | 0d | Faythe Scheidecker [160%] | 8h | 224 |
| 118 | 4.2.2.6 | Provide training for usage of Hardcat software | 1d | 2021-01-04 | 2021-01-05 | 117 | 0d | Faythe Scheidecker [80%] | 4h | 112 |
| 119 | 4.2.2.7 | Monitor training progress for each driver/ employee | 1d | 2021-01-05 | 2021-01-05 | 118 | 0d | Faythe Scheidecker [6%] | 0.3h | 8.4 |
| 120 | 4.2.2.8 | Conduct a query session | 0.5d | 2021-01-05 | 2021-01-06 | 119 | 0d | Faythe Scheidecker [40%] | 1h | 28 |
| 121 | 4.2.2.9 | Document the training session and feedback | 0.5d | 2021-01-06 | 2021-01-06 | 120 | 0d | Faythe Scheidecker [20%] | 0.5h | 14 |

| ID | WBS | Task | Duration | Start | Finish | Predecessors | Total slack | Resources | Work | Cost |
| --- | --- | --- | --- | --- | --- | --- | --- | --- | --- | --- |
| 122 | 4.2.3 | **Training Class 3** | 10.01d | 2021-01-06 | 2021-01-14 |  | 0d |  | 24h | 672 |
| 123 | 4.2.3.1 | Training overview session by Faythe Scheidecker | 1d | 2021-01-06 | 2021-01-06 | 121 | 0d | Faythe Scheidecker [60%] | 3h | 84 |
| 124 | 4.2.3.2 | Organize the resources required for training | 1d | 2021-01-06 | 2021-01-07 | 123 | 0d | Faythe Scheidecker [20%] | 1h | 28 |
| 125 | 4.2.3.3 | Distribute the required training materials | 0.01d | 2021-01-07 | 2021-01-07 | 124 | 0d | Faythe Scheidecker [400%] | 0.2h | 5.6 |
| 126 | 4.2.3.4 | Conduct basic training session | 1d | 2021-01-08 | 2021-01-08 | 125FS+1d | 0d | Faythe Scheidecker [120%] | 6h | 168 |
| 127 | 4.2.3.5 | Provide hands on training experience for handling hardware equipments | 1d | 2021-01-11 | 2021-01-12 | 126FS+1d | 0d | Faythe Scheidecker [160%] | 8h | 224 |
| 128 | 4.2.3.6 | Provide training for usage of Hardcat software | 1d | 2021-01-12 | 2021-01-13 | 127FS+1d | 0d | Faythe Scheidecker [80%] | 4h | 112 |
| 129 | 4.2.3.7 | Monitor training progress for each driver/ employee | 1d | 2021-01-13 | 2021-01-13 | 128 | 0d | Faythe Scheidecker [6%] | 0.3h | 8.4 |
| 130 | 4.2.3.8 | Conduct a query session | 0.5d | 2021-01-13 | 2021-01-14 | 129 | 0d | Faythe Scheidecker [40%] | 1h | 28 |
| 131 | 4.2.3.9 | Document the training session and feedback | 0.5d | 2021-01-14 | 2021-01-14 | 130 | 0d | Faythe Scheidecker [20%] | 0.5h | 14 |
| 132 | 5 | **Project Implementation** | 216d | 2021-01-15 | 2021-07-23 |  | 0d |  | 1496.3h | 68,697.06 |
| 133 | 5.1 | Meeting with the project team | 1d | 2021-01-15 | 2021-01-15 | 131FS+1d | 0d | Arlene Bradshaw [7.5%]; Faythe Scheidecker [7.5%]; John Swenny [7.5%]; Mia Bolivar [7.5%]; Naina Shukla [7.5%]; Nikita Dongare [7.5%]; Rayshon Thompson [7.5%]; Yuqin Luo [7.5%] | 3h | 106.88 |
| 134 | 5.2 | Initiate the system installation/ configuration process | 1d | 2021-01-15 | 2021-01-18 | 133 | 0d | Akeem Bakir [33.3%]; Arlene Bradshaw [33.3%]; Mia Bolivar [33.3%] | 5h | 128.33 |
| 135 | 5.3 | **Configuration and integration of Hardcat Cloud software into Reliable's existing Delivery Management System (RDMS)** | 42d | 2021-01-18 | 2021-02-23 |  | 0d |  | 288h | 8,140.5 |
| 136 | 5.3.1 | **Sprint 1** | 14d | 2021-01-18 | 2021-01-29 |  | 0d |  | 96h | 2,713.5 |
| 137 | 5.3.1.1 | Set up configuration environment | 1d | 2021-01-18 | 2021-01-19 | 134 | 0d | Akeem Bakir [26.7%]; Arlene Bradshaw [26.7%]; John Swenny [26.7%]; Mia Bolivar [26.7%]; Naina Shukla [26.7%]; Rayshon Thompson [26.7%] | 8h | 244 |
| 138 | 5.3.1.2 | Understand the existing configurations of Reliable Delivery Management System | 1d | 2021-01-19 | 2021-01-19 | 137 | 218d | Akeem Bakir [16.7%]; Arlene Bradshaw [16.7%]; John Swenny [16.7%]; Mia Bolivar [16.7%]; Naina Shukla [16.7%]; Rayshon Thompson [16.7%] | 5h | 152.5 |
| 139 | 5.3.1.3 | Study the configuration of Hardcat Cloud software | 1d | 2021-01-19 | 2021-01-19 | 137 | 0d | Akeem Bakir [16.7%]; Arlene Bradshaw [16.7%]; John Swenny [16.7%]; Mia Bolivar [16.7%]; Naina Shukla [16.7%]; Rayshon Thompson [16.7%] | 5h | 152.5 |
| 140 | 5.3.1.4 | Prepare a design for configuration and integration of the 2 systems | 2d | 2021-01-19 | 2021-01-20 | 139 | 0d | Akeem Bakir [23.3%]; Arlene Bradshaw [23.3%]; John Swenny [23.3%]; Mia Bolivar [23.3%]; Naina Shukla [23.3%]; Rayshon Thompson [23.3%] | 14h | 427 |
| 141 | 5.3.1.5 | Review of the design with the stakeholders | 1d | 2021-01-20 | 2021-01-21 | 140 | 0d | Adam Alberts [20%]; Amy Holland [20%]; Nikita Dongare [20%] | 3h | 42 |
| 142 | 5.3.1.6 | Rework the design if needed | 1d | 2021-01-21 | 2021-01-22 | 141 | 0d | Akeem Bakir [26.7%]; Arlene Bradshaw [26.7%]; John Swenny [26.7%]; Mia Bolivar [26.7%]; Naina Shukla [26.7%]; Rayshon Thompson [26.7%] | 8h | 244 |
| 143 | 5.3.1.7 | Integrate Hardcat software with RDMS | 5d | 2021-01-22 | 2021-01-27 | 142 | 0d | Akeem Bakir [23.3%]; Arlene Bradshaw [23.3%]; John Swenny [23.3%]; Mia Bolivar [23.3%]; Naina Shukla [23.3%]; Rayshon Thompson [23.3%] | 35h | 1,067.5 |
| 144 | 5.3.1.8 | Perform software testing to check for accuracy and reliability | 1d | 2021-01-27 | 2021-01-27 | 143 | 0d | Akeem Bakir [80%]; Mia Bolivar [80%]; Yuqin Luo [80%] | 12h | 288 |
| 145 | 5.3.1.9 | Document test cases for future use | 1d | 2021-01-27 | 2021-01-28 | 144 | 0d | Akeem Bakir [26.7%]; Mia Bolivar [26.7%]; Yuqin Luo [26.7%] | 4h | 96 |
| 146 | 5.3.1.10 | Approval from the stakeholders | 1d | 2021-01-28 | 2021-01-29 | 145 | 0d | Adam Alberts [10%]; Amy Holland [10%]; Craig Holland [10%]; Tony Darin [10%] | 2h |  |

| ID | WBS | Task | Duration | Start | Finish | Predecessors | Total slack | Resources | Work | Cost |
| --- | --- | --- | --- | --- | --- | --- | --- | --- | --- | --- |
| 147 | 5.3.2 | **Sprint 2** | 14d | 2021-01-29 | 2021-02-10 |  | 0d |  | 96h | 2,713.5 |
| 148 | 5.3.2.1 | Set up configuration environment | 1d | 2021-01-29 | 2021-01-29 | 146 | 0d | Akeem Bakir [26.7%]; Arlene Bradshaw [26.7%]; John Swenny [26.7%]; Mia Bolivar [26.7%]; Naina Shukla [26.7%]; Rayshon Thompson [26.7%] | 8h | 244 |
| 149 | 5.3.2.2 | Understand the existing configurations of Reliable Delivery Management System | 1d | 2021-01-29 | 2021-02-01 | 148 | 204d | Akeem Bakir [16.7%]; Arlene Bradshaw [16.7%]; John Swenny [16.7%]; Mia Bolivar [16.7%]; Naina Shukla [16.7%]; Rayshon Thompson [16.7%] | 5h | 152.5 |
| 150 | 5.3.2.3 | Study the configuration of Hardcat Cloud software | 1d | 2021-01-29 | 2021-02-01 | 148 | 0d | Akeem Bakir [16.7%]; Arlene Bradshaw [16.7%]; John Swenny [16.7%]; Mia Bolivar [16.7%]; Naina Shukla [16.7%]; Rayshon Thompson [16.7%] | 5h | 152.5 |
| 151 | 5.3.2.4 | Prepare a design for configuration and integration of the 2 systems | 2d | 2021-02-01 | 2021-02-02 | 150 | 0d | Akeem Bakir [23.3%]; Arlene Bradshaw [23.3%]; John Swenny [23.3%]; Mia Bolivar [23.3%]; Naina Shukla [23.3%]; Rayshon Thompson [23.3%] | 14h | 427 |
| 152 | 5.3.2.5 | Review of the design with the stakeholders | 1d | 2021-02-02 | 2021-02-03 | 151 | 0d | Adam Alberts [20%]; Amy Holland [20%]; Nikita Dongare [20%] | 3h | 42 |
| 153 | 5.3.2.6 | Rework the design if needed | 1d | 2021-02-03 | 2021-02-03 | 152 | 0d | Akeem Bakir [26.7%]; Arlene Bradshaw [26.7%]; John Swenny [26.7%]; Mia Bolivar [26.7%]; Naina Shukla [26.7%]; Rayshon Thompson [26.7%] | 8h | 244 |
| 154 | 5.3.2.7 | Integrate Hardcat software with RDMS | 5d | 2021-02-03 | 2021-02-09 | 153 | 0d | Akeem Bakir [23.3%]; Arlene Bradshaw [23.3%]; John Swenny [23.3%]; Mia Bolivar [23.3%]; Naina Shukla [23.3%]; Rayshon Thompson [23.3%] | 35h | 1,067.5 |
| 155 | 5.3.2.8 | Perform software testing to check for accuracy and reliability | 1d | 2021-02-09 | 2021-02-09 | 154 | 0d | Akeem Bakir [80%]; Mia Bolivar [80%]; Yuqin Luo [80%] | 12h | 288 |
| 156 | 5.3.2.9 | Document test cases for future use | 1d | 2021-02-09 | 2021-02-10 | 155 | 0d | Akeem Bakir [26.7%]; Mia Bolivar [26.7%]; Yuqin Luo [26.7%] | 4h | 96 |
| 157 | 5.3.2.10 | Approval from the stakeholders | 1d | 2021-02-10 | 2021-02-10 | 156 | 0d | Adam Alberts [10%]; Amy Holland [10%]; Craig Holland [10%]; Tony Darin [10%] | 2h |  |
| 158 | 5.3.3 | **Sprint 3** | 14d | 2021-02-10 | 2021-02-23 |  | 0d |  | 96h | 2,713.5 |
| 159 | 5.3.3.1 | Set up configuration environment | 1d | 2021-02-10 | 2021-02-11 | 157 | 0d | Akeem Bakir [26.7%]; Arlene Bradshaw [26.7%]; John Swenny [26.7%]; Mia Bolivar [26.7%]; Naina Shukla [26.7%]; Rayshon Thompson [26.7%] | 8h | 244 |
| 160 | 5.3.3.2 | Understand the existing configurations of Reliable Delivery Management System | 1d | 2021-02-11 | 2021-02-12 | 159 | 190d | Akeem Bakir [16.7%]; Arlene Bradshaw [16.7%]; John Swenny [16.7%]; Mia Bolivar [16.7%]; Naina Shukla [16.7%]; Rayshon Thompson [16.7%] | 5h | 152.5 |
| 161 | 5.3.3.3 | Study the configuration of Hardcat Cloud software | 1d | 2021-02-11 | 2021-02-12 | 159 | 0d | Akeem Bakir [16.7%]; Arlene Bradshaw [16.7%]; John Swenny [16.7%]; Mia Bolivar [16.7%]; Naina Shukla [16.7%]; Rayshon Thompson [16.7%] | 5h | 152.5 |
| 162 | 5.3.3.4 | Prepare a design for configuration and integration of the 2 systems | 2d | 2021-02-12 | 2021-02-15 | 161 | 0d | Akeem Bakir [23.3%]; Arlene Bradshaw [23.3%]; John Swenny [23.3%]; Mia Bolivar [23.3%]; Naina Shukla [23.3%]; Rayshon Thompson [23.3%] | 14h | 427 |
| 163 | 5.3.3.5 | Review of the design with the stakeholders | 1d | 2021-02-15 | 2021-02-16 | 162 | 0d | Adam Alberts [20%]; Amy Holland [20%]; Nikita Dongare [20%] | 3h | 42 |
| 164 | 5.3.3.6 | Rework the design if needed | 1d | 2021-02-16 | 2021-02-16 | 163 | 0d | Akeem Bakir [26.7%]; Arlene Bradshaw [26.7%]; John Swenny [26.7%]; Mia Bolivar [26.7%]; Naina Shukla [26.7%]; Rayshon Thompson [26.7%] | 8h | 244 |
| 165 | 5.3.3.7 | Integrate Hardcat software with RDMS | 5d | 2021-02-16 | 2021-02-19 | 164 | 0d | Akeem Bakir [23.3%]; Arlene Bradshaw [23.3%]; John Swenny [23.3%]; Mia Bolivar [23.3%]; Naina Shukla [23.3%]; Rayshon Thompson [23.3%] | 35h | 1,067.5 |
| 166 | 5.3.3.8 | Perform software testing to check for accuracy and reliability | 1d | 2021-02-19 | 2021-02-22 | 165 | 0d | Akeem Bakir [80%]; Mia Bolivar [80%]; Yuqin Luo [80%] | 12h | 288 |
| 167 | 5.3.3.9 | Document the test cases for future use | 1d | 2021-02-22 | 2021-02-23 | 166 | 0d | Akeem Bakir [26.7%]; Mia Bolivar [26.7%]; Yuqin Luo [26.7%] | 4h | 96 |
| 168 | 5.3.3.10 | Approval from the stakeholders | 1d | 2021-02-23 | 2021-02-23 | 167 | 0d | Adam Alberts [10%]; Amy Holland [10%]; Craig Holland [10%]; Tony Darin [10%] | 2h |  |
| 169 | 5.4 | **Setup of RFID label printer** | 14d | 2021-02-23 | 2021-03-08 |  | 0d |  | 96h | 3,255.17 |
| 170 | 5.4.1 | **Sprint 1** | 14d | 2021-02-23 | 2021-03-08 |  | 0d |  | 96h | 3,255.17 |
| 171 | 5.4.1.1 | Setup printer configuration environment | 1d | 2021-02-23 | 2021-02-24 | 168 | 0d | Akeem Bakir [33.3%]; Arlene Bradshaw [33.3%]; Mia Bolivar [33.3%]; Naina Shukla [33.3%]; Nikita Dongare [33.3%]; Rayshon Thompson [33.3%] | 10h | 311.67 |
| 172 | 5.4.1.2 | Install software required for the printer | 2d | 2021-02-24 | 2021-02-25 | 171 | 0d | Akeem Bakir [15%]; Arlene Bradshaw [15%]; Mia Bolivar [15%]; Naina Shukla [15%]; Nikita Dongare [15%]; Rayshon Thompson [15%] | 9h | 280.5 |
| 173 | 5.4.1.3 | Configure the software on the printer for RFID labels | 1d | 2021-02-25 | 2021-02-26 | 172 | 0d | Akeem Bakir [40%]; Arlene Bradshaw [40%]; Mia Bolivar [40%]; Naina Shukla [40%]; Nikita Dongare [40%]; Rayshon Thompson [40%] | 12h | 374 |
| 174 | 5.4.1.4 | Setup testing environment | 3d | 2021-02-26 | 2021-03-02 | 173 | 0d | Mia Bolivar [66.7%]; Yuqin Luo [66.7%]; Arlene Bradshaw [66.7%] | 30h | 1,090 |
| 175 | 5.4.1.5 | Perform testing for printing RFID labels | 4d | 2021-03-02 | 2021-03-04 | 174 | 0d | Mia Bolivar [41.7%]; Yuqin Luo [41.7%]; Arlene Bradshaw [41.7%] | 25h | 908.33 |
| 176 | 5.4.1.6 | Document the test cases for future use | 2d | 2021-03-04 | 2021-03-05 | 175 | 0d | Mia Bolivar [26.7%]; Yuqin Luo [26.7%]; Arlene Bradshaw [26.7%] | 8h | 290.67 |
| 177 | 5.4.1.7 | Approval of the setup from the stakeholders | 1d | 2021-03-05 | 2021-03-08 | 176 | 0d | Adam Alberts [10%]; Amy Holland [10%]; Craig Holland [10%]; Tony Darin [10%] | 2h |  |

| ID | WBS | Task | Duration | Start | Finish | Predecessors | Total slack | Resources | Work | Cost |
| --- | --- | --- | --- | --- | --- | --- | --- | --- | --- | --- |
| 178 | 5.5 | **Installation of first vehicle RFID mounted and handheld reader** | 14d | 2021-03-08 | 2021-03-19 |  | 0d |  | 103h | 2,450.6 |
| 179 | 5.5.1 | **Sprint 1** | 14d | 2021-03-08 | 2021-03-19 |  | 0d |  | 103h | 2,450.6 |
| 180 | 5.5.1.1 | Set up installation environment | 1d | 2021-03-08 | 2021-03-09 | 177 | 0d | Akeem Bakir [20%]; Arlene Bradshaw [20%]; John Sigma [20%]; Mia Bolivar [20%]; Ricardo McGathey [20%] | 5h | 127 |
| 181 | 5.5.1.2 | Understand the vehicle structure | 1d | 2021-03-09 | 2021-03-09 | 180 | 0d | Akeem Bakir [20%]; Arlene Bradshaw [20%]; John Sigma [20%]; Mia Bolivar [20%]; Ricardo McGathey [20%] | 5h | 127 |
| 182 | 5.5.1.3 | Create a design for installation of RFID handheld reader on the vehicle | 2d | 2021-03-09 | 2021-03-10 | 181 | 0d | Akeem Bakir [40%]; Arlene Bradshaw [40%]; John Sigma [40%]; Mia Bolivar [40%]; Ricardo McGathey [40%] | 20h | 508 |
| 183 | 5.5.1.4 | Review of the design with the stakeholders | 1d | 2021-03-10 | 2021-03-11 | 182 | 0d | Adam Alberts [6.7%]; Amy Holland [6.7%]; Craig Holland [6.7%]; Nikita Dongare [6.7%]; Paulo Maina [6.7%]; Tony Darin [6.7%] | 2h | 14 |
| 184 | 5.5.1.5 | Rework the design if needed | 1d | 2021-03-11 | 2021-03-12 | 183 | 0d | Akeem Bakir [32%]; Arlene Bradshaw [32%]; John Sigma [32%]; Mia Bolivar [32%]; Ricardo McGathey [32%] | 8h | 203.2 |
| 185 | 5.5.1.6 | Approval of the design | 1d | 2021-03-12 | 2021-03-12 | 184 | 0d | Adam Alberts [6.7%]; Amy Holland [6.7%]; Craig Holland [6.7%]; Nikita Dongare [6.7%]; Paulo Maina [6.7%]; Tony Darin [6.7%] | 2h | 14 |
| 186 | 5.5.1.7 | Configure the handheld reader before installation | 1d | 2021-03-12 | 2021-03-15 | 185 | 0d | Akeem Bakir [24%]; Arlene Bradshaw [24%]; John Sigma [24%]; Mia Bolivar [24%]; Ricardo McGathey [24%] | 6h | 152.4 |
| 187 | 5.5.1.8 | Install the RFID handheld reader based on the design | 3d | 2021-03-15 | 2021-03-17 | 186 | 0d | Akeem Bakir [40%]; Arlene Bradshaw [40%]; John Sigma [40%]; Mia Bolivar [40%]; Ricardo McGathey [40%] | 30h | 762 |
| 188 | 5.5.1.9 | Perform testing to check for accuracy of handheld readers | 1d | 2021-03-17 | 2021-03-17 | 187 | 0d | Akeem Bakir; Arlene Bradshaw; Yuqin Luo | 15h | 345 |
| 189 | 5.5.1.10 | Document test cases for future use | 1d | 2021-03-17 | 2021-03-18 | 188 | 0d | Akeem Bakir [53.3%]; Arlene Bradshaw [53.3%]; Yuqin Luo [53.3%] | 8h | 184 |
| 190 | 5.5.1.11 | Approval from the stakeholders | 1d | 2021-03-18 | 2021-03-19 | 189 | 0d | Adam Alberts [6.7%]; Amy Holland [6.7%]; Craig Holland [6.7%]; Nikita Dongare [6.7%]; Tony Darin [6.7%]; Paulo Maina [6.7%] | 2h | 14 |
| 191 | 5.6 | **Installation of the remaining 14 RFID handheld reader sets** | 42d | 2021-03-19 | 2021-04-26 |  | 0d |  | 291h | 7,115.4 |
| 192 | 5.6.1 | **Sprint 1 (Set of 5 RFID handheld readers)** | 14d | 2021-03-19 | 2021-03-31 |  | 0d |  | 97h | 2,371.8 |
| 193 | 5.6.1.1 | Set up installation environment | 1d | 2021-03-19 | 2021-03-19 | 190 | 0d | Akeem Bakir [20%]; Arlene Bradshaw [20%]; John Sigma [20%]; Mia Bolivar [20%]; Ricardo McGathey [20%] | 5h | 127 |
| 194 | 5.6.1.2 | Understand the vehicle structure | 1d | 2021-03-19 | 2021-03-22 | 193 | 0d | Akeem Bakir [20%]; Arlene Bradshaw [20%]; John Sigma [20%]; Mia Bolivar [20%]; Ricardo McGathey [20%] | 5h | 127 |
| 195 | 5.6.1.3 | Create a design for installation of RFID handheld reader on the vehicle | 2d | 2021-03-22 | 2021-03-23 | 194 | 0d | Akeem Bakir [40%]; Arlene Bradshaw [40%]; John Sigma [40%]; Mia Bolivar [40%]; Ricardo McGathey [40%] | 20h | 508 |
| 196 | 5.6.1.4 | Configure the handheld reader before installation | 1d | 2021-03-23 | 2021-03-24 | 195 | 0d | Akeem Bakir [8%]; Arlene Bradshaw [8%]; John Sigma [8%]; Mia Bolivar [8%]; Ricardo McGathey [8%] | 2h | 50.8 |
| 197 | 5.6.1.5 | Install the RFID handheld reader based on the design | 4d | 2021-03-24 | 2021-03-26 | 196 | 0d | Akeem Bakir [40%]; Arlene Bradshaw [40%]; John Sigma [40%]; Mia Bolivar [40%]; Ricardo McGathey [40%] | 40h | 1,016 |
| 198 | 5.6.1.6 | Perform testing to check for accuracy of handheld readers | 2d | 2021-03-26 | 2021-03-30 | 197 | 0d | Akeem Bakir [50%]; Arlene Bradshaw [50%]; Yuqin Luo [50%] | 15h | 345 |
| 199 | 5.6.1.7 | Document test cases for future use | 2d | 2021-03-30 | 2021-03-31 | 198 | 0d | Akeem Bakir [26.7%]; Arlene Bradshaw [26.7%]; Yuqin Luo [26.7%] | 8h | 184 |
| 200 | 5.6.1.8 | Approval from the stakeholders | 1d | 2021-03-31 | 2021-03-31 | 199 | 0d | Adam Alberts [6.7%]; Amy Holland [6.7%]; Craig Holland [6.7%]; Nikita Dongare [6.7%]; Tony Darin [6.7%]; Paulo Maina [6.7%] | 2h | 14 |
| 201 | 5.6.2 | **Sprint 2 (Set of 5 RFID handheld readers)** | 14d | 2021-03-31 | 2021-04-13 |  | 0d |  | 97h | 2,371.8 |
| 202 | 5.6.2.1 | Set up installation environment | 1d | 2021-03-31 | 2021-04-01 | 200 | 0d | Akeem Bakir [20%]; Arlene Bradshaw [20%]; John Sigma [20%]; Mia Bolivar [20%]; Ricardo McGathey [20%] | 5h | 127 |
| 203 | 5.6.2.2 | Understand the vehicle structure | 1d | 2021-04-01 | 2021-04-02 | 202 | 0d | Akeem Bakir [20%]; Arlene Bradshaw [20%]; John Sigma [20%]; Mia Bolivar [20%]; Ricardo McGathey [20%] | 5h | 127 |
| 204 | 5.6.2.3 | Create a design for installation of RFID handheld reader on the vehicle | 2d | 2021-04-02 | 2021-04-05 | 203 | 0d | Akeem Bakir [40%]; Arlene Bradshaw [40%]; John Sigma [40%]; Mia Bolivar [40%]; Ricardo McGathey [40%] | 20h | 508 |
| 205 | 5.6.2.4 | Configure the handheld reader before installation | 1d | 2021-04-05 | 2021-04-06 | 204 | 0d | Akeem Bakir [8%]; Arlene Bradshaw [8%]; John Sigma [8%]; Mia Bolivar [8%]; Ricardo McGathey [8%] | 2h | 50.8 |
| 206 | 5.6.2.5 | Install the RFID handheld reader based on the design | 4d | 2021-04-06 | 2021-04-08 | 205 | 0d | Akeem Bakir [40%]; Arlene Bradshaw [40%]; John Sigma [40%]; Mia Bolivar [40%]; Ricardo McGathey [40%] | 40h | 1,016 |
| 207 | 5.6.2.6 | Perform testing to check for accuracy of handheld readers | 2d | 2021-04-08 | 2021-04-09 | 206 | 0d | Akeem Bakir [50%]; Arlene Bradshaw [50%]; Yuqin Luo [50%] | 15h | 345 |
| 208 | 5.6.2.7 | Document test cases for future use | 2d | 2021-04-09 | 2021-04-13 | 207 | 0d | Akeem Bakir [26.7%]; Arlene Bradshaw [26.7%]; Yuqin Luo [26.7%] | 8h | 184 |
| 209 | 5.6.2.8 | Approval from the stakeholders | 1d | 2021-04-13 | 2021-04-13 | 208 | 0d | Adam Alberts [6.7%]; Amy Holland [6.7%]; Craig Holland [6.7%]; Nikita Dongare [6.7%]; Tony Darin [6.7%]; Paulo Maina [6.7%] | 2h | 14 |

| ID | WBS | Task | Duration | Start | Finish | Predecessors | Total slack | Resources | Work | Cost |
| --- | --- | --- | --- | --- | --- | --- | --- | --- | --- | --- |
| 210 | 5.6.3 | **Sprint 3 (Set of 4 RFID handheld readers)** | 14d | 2021-04-13 | 2021-04-26 |  | 0d |  | 97h | 2,371.8 |
| 211 | 5.6.3.1 | Set up installation environment | 1d | 2021-04-13 | 2021-04-14 | 209 | 0d | Akeem Bakir [20%]; Arlene Bradshaw [20%]; John Sigma [20%]; Mia Bolivar [20%]; Ricardo McGathey [20%] | 5h | 127 |
| 212 | 5.6.3.2 | Understand the vehicle structure | 1d | 2021-04-14 | 2021-04-14 | 211 | 0d | Akeem Bakir [20%]; Arlene Bradshaw [20%]; John Sigma [20%]; Mia Bolivar [20%]; Ricardo McGathey [20%] | 5h | 127 |
| 213 | 5.6.3.3 | Create a design for installation of RFID handheld reader on the vehicle | 2d | 2021-04-14 | 2021-04-16 | 212 | 0d | Akeem Bakir [40%]; Arlene Bradshaw [40%]; John Sigma [40%]; Mia Bolivar [40%]; Ricardo McGathey [40%] | 20h | 508 |
| 214 | 5.6.3.4 | Configure the handheld reader before installation | 1d | 2021-04-16 | 2021-04-16 | 213 | 0d | Akeem Bakir [8%]; Arlene Bradshaw [8%]; John Sigma [8%]; Mia Bolivar [8%]; Ricardo McGathey [8%] | 2h | 50.8 |
| 215 | 5.6.3.5 | Install the RFID handheld reader based on the design | 4d | 2021-04-16 | 2021-04-21 | 214 | 0d | Akeem Bakir [40%]; Arlene Bradshaw [40%]; John Sigma [40%]; Mia Bolivar [40%]; Ricardo McGathey [40%] | 40h | 1,016 |
| 216 | 5.6.3.6 | Perform testing to check for accuracy of handheld readers | 2d | 2021-04-21 | 2021-04-22 | 215 | 0d | Akeem Bakir [50%]; Arlene Bradshaw [50%]; Yuqin Luo [50%] | 15h | 345 |
| 217 | 5.6.3.7 | Document test cases for future use | 2d | 2021-04-22 | 2021-04-23 | 216 | 0d | Akeem Bakir [26.7%]; Arlene Bradshaw [26.7%]; Yuqin Luo [26.7%] | 8h | 184 |
| 218 | 5.6.3.8 | Approval from the stakeholders | 1d | 2021-04-23 | 2021-04-26 | 217 | 0d | Adam Alberts [6.7%]; Amy Holland [6.7%]; Craig Holland [6.7%]; Nikita Dongare [6.7%]; Tony Darin [6.7%]; Paulo Maina [6.7%] | 2h | 14 |
| 219 | 5.7 | **On production testing of all vehicles with readers** | 14d | 2021-04-26 | 2021-05-07 |  | 0d |  | 112h | 4,013.47 |
| 220 | 5.7.1 | **Sprint 1** | 14d | 2021-04-26 | 2021-05-07 |  | 0d |  | 112h | 4,013.47 |
| 221 | 5.7.1.1 | Set up testing environment for all vehicles | 1d | 2021-04-26 | 2021-04-27 | 218 | 0d | Arlene Bradshaw [40%]; Mia Bolivar [40%]; Yuqin Luo [40%] | 6h | 218 |
| 222 | 5.7.1.2 | Identify potential points of failures | 1d | 2021-04-27 | 2021-04-27 | 221 | 0d | Arlene Bradshaw [66.7%]; Mia Bolivar [66.7%]; Yuqin Luo [66.7%] | 10h | 363.33 |
| 223 | 5.7.1.3 | Perform fault testing | 3d | 2021-04-27 | 2021-04-29 | 222 | 0d | Arlene Bradshaw [66.7%]; Mia Bolivar [66.7%]; Yuqin Luo [66.7%] | 30h | 1,090 |
| 224 | 5.7.1.4 | Perform testing using different test cases to test the readers on all vehicles | 3d | 2021-04-29 | 2021-05-03 | 223 | 0d | Arlene Bradshaw [66.7%]; Mia Bolivar [66.7%]; Yuqin Luo [66.7%] | 30h | 1,090 |
| 225 | 5.7.1.5 | Test the accuracy and reliability of readers for real time tracking | 3d | 2021-05-03 | 2021-05-05 | 224 | 0d | Arlene Bradshaw [31.1%]; Mia Bolivar [31.1%]; Yuqin Luo [31.1%] | 14h | 508.67 |
| 226 | 5.7.1.6 | Document test cases for future use | 1d | 2021-05-05 | 2021-05-05 | 225 | 0d | Arlene Bradshaw [66.7%]; Mia Bolivar [66.7%]; Yuqin Luo [66.7%] | 10h | 363.33 |
| 227 | 5.7.1.7 | Document backup plan in case of failure of readers | 1d | 2021-05-05 | 2021-05-06 | 226 | 0d | Arlene Bradshaw [66.7%]; Mia Bolivar [66.7%]; Yuqin Luo [66.7%] | 10h | 363.33 |
| 228 | 5.7.1.8 | Approval of testing from stakeholders | 1d | 2021-05-06 | 2021-05-07 | 227 | 0d | Adam Alberts [8%]; Amy Holland [8%]; Craig Holland [8%]; Nikita Dongare [8%]; Tony Darin [8%] | 2h | 16.8 |
| 229 | 5.8 | **Final Production Release Testing of the RDMS with integration of the readers** | 14d | 2021-05-07 | 2021-05-19 |  | 0d |  | 100h | 13,392.25 |
| 230 | 5.8.1 | **Sprint 1** | 14d | 2021-05-07 | 2021-05-19 |  | 0d |  | 100h | 13,392.25 |
| 231 | 5.8.1.1 | Prepare a product release plan | 2d | 2021-05-07 | 2021-05-10 | 228 | 0d | Arlene Bradshaw [50%]; Mia Bolivar [50%]; Nikita Dongare [50%]; Yuqin Luo [50%] | 20h | 755 |
| 232 | 5.8.1.2 | Review of the plan with the stakeholders | 1d | 2021-05-10 | 2021-05-11 | 231 | 0d | Adam Alberts [25%]; Amy Holland [25%]; Craig Holland [25%]; Tony Darin [25%] | 5h |  |
| 233 | 5.8.1.3 | Rework the plan if needed | 2d | 2021-05-11 | 2021-05-12 | 232 | 0d | Arlene Bradshaw [37.5%]; Mia Bolivar [37.5%]; Nikita Dongare [37.5%]; Yuqin Luo [37.5%] | 15h | 566.25 |
| 234 | 5.8.1.4 | Approval of the plan by the stakeholders | 1d | 2021-05-12 | 2021-05-12 | 233 | 0d | Adam Alberts [5%]; Amy Holland [5%]; Craig Holland [5%]; Tony Darin [5%] | 1h |  |
| 235 | 5.8.1.5 | Set up the production testing environment | 2d | 2021-05-12 | 2021-05-14 | 234 | 0d | Arlene Bradshaw [50%]; Mia Bolivar [50%]; Yuqin Luo [50%] | 15h | 545 |
| 236 | 5.8.1.6 | Use test cases to check for reliability and accuracy of real time tracking | 2d | 2021-05-14 | 2021-05-17 | 235 | 0d | Arlene Bradshaw [40%]; Mia Bolivar [40%]; Yuqin Luo [40%] | 12h | 436 |
| 237 | 5.8.1.7 | Use various test cases to check the quality of RFID materials | 1d | 2021-05-17 | 2021-05-18 | 236 | 0d | Arlene Bradshaw [66.7%]; Mia Bolivar [66.7%]; Yuqin Luo [66.7%] | 10h | 363.33 |
| 238 | 5.8.1.8 | Monitor the production release testing for quality issues | 1d | 2021-05-18 | 2021-05-18 | 237 | 0d | Arlene Bradshaw [66.7%]; Mia Bolivar [66.7%]; Yuqin Luo [66.7%] | 10h | 363.33 |
| 239 | 5.8.1.9 | Document the issues and test cases for future improvement | 1d | 2021-05-18 | 2021-05-19 | 238 | 0d | Arlene Bradshaw [66.7%]; Mia Bolivar [66.7%]; Yuqin Luo [66.7%] | 10h | 363.33 |
| 240 | 5.8.1.10 | Approval of production release testing from stakeholders | 1d | 2021-05-19 | 2021-05-19 | 239 | 0d | Adam Alberts [10%]; Amy Holland [10%]; Craig Holland [10%]; Tony Darin [10%]; Enterprise Software License -Payment upon completing testing | 2h | 10,000 |

| ID | WBS | Task | Duration | Start | Finish | Predecessors | Total slack | Resources | Work | Cost |
| --- | --- | --- | --- | --- | --- | --- | --- | --- | --- | --- |
| 241 | 5.9 | **Trial Implementation** | 60d | 2021-05-19 | 2021-07-12 |  | 0d |  | 348.3h | 9,306.04 |
| 242 | 5.9.1 | Setup Trial implementation environment | 14.06d | 2021-05-19 | 2021-06-01 | 240 | 0d | Arlene Bradshaw [20%]; John Swenny [20%]; Mia Bolivar [20%]; Naina Shukla [20%]; Rayshon Thompson [20%] | 70.3h | 2,572.98 |
| 243 | 5.9.2 | Create a Trial implementation Plan | 4d | 2021-06-01 | 2021-06-04 | 242 | 0d | Arlene Bradshaw [20%]; John Swenny [20%]; Mia Bolivar [20%]; Naina Shukla [20%]; Rayshon Thompson [20%]; Yuqin Luo [20%] | 24h | 860 |
| 244 | 5.9.3 | Review of theTrial implementation Plan | 1d | 2021-06-04 | 2021-06-04 | 243 | 0d | Adam Alberts [20%]; Amy Holland [20%]; Craig Holland [20%]; Tony Darin [20%] | 4h |  |
| 245 | 5.9.4 | Rework the plan if required | 4d | 2021-06-04 | 2021-06-09 | 244 | 0d | Arlene Bradshaw [20%]; John Swenny [20%]; Mia Bolivar [20%]; Naina Shukla [20%]; Rayshon Thompson [20%] | 20h | 732 |
| 246 | 5.9.5 | Approval of the Trial implementation plan by stakeholders | 2.5d | 2021-06-09 | 2021-06-10 | 245 | 0d | Adam Alberts [20%]; Amy Holland [20%]; Craig Holland [20%]; Tony Darin [20%] | 10h |  |
| 247 | 5.9.6 | Connect RFID devices to the Hardcat cloud software | 12.78d | 2021-06-10 | 2021-06-22 | 246 | 0d | Akeem Bakir [18.5%]; Arlene Bradshaw [18.5%]; John Swenny [18.5%]; Mia Bolivar [18.5%]; Naina Shukla [18.5%]; Rayshon Thompson [18.5%]; Adam Alberts [92.5%] | 130h | 2,162.73 |
| 248 | 5.9.7 | Monitor and evaluate the accuracy of real time tracking | 6.67d | 2021-06-22 | 2021-06-29 | 247 | 0d | Akeem Bakir [20%]; Arlene Bradshaw [20%]; John Swenny [20%]; Mia Bolivar [20%]; Naina Shukla [20%]; Rayshon Thompson [20%] | 40h | 1,220 |
| 249 | 5.9.8 | Periodic quality assurance testing of RFID hardware materials | 13.33d | 2021-06-29 | 2021-07-09 | 248 | 0d | Arlene Bradshaw [20%]; Mia Bolivar [20%]; Yuqin Luo [20%] | 40h | 1,453.33 |
| 250 | 5.9.9 | Document issues encountered in the trial implementation | 1.67d | 2021-07-09 | 2021-07-12 | 249 | 0d | Akeem Bakir [20%]; Arlene Bradshaw [20%]; John Swenny [20%]; Mia Bolivar [20%]; Naina Shukla [20%]; Rayshon Thompson [20%] | 10h | 305 |
| 251 | 5.10 | **Final Report Development** | 14d | 2021-07-12 | 2021-07-23 |  | 0d |  | 150h | 20,788.43 |
| 252 | 5.10.1 | Evaluate the outcomes of the trial implementation | 4d | 2021-07-12 | 2021-07-14 | 250 | 0d | Arlene Bradshaw [28.6%]; John Swenny [28.6%]; Mia Bolivar [28.6%]; Naina Shukla [28.6%]; Nikita Dongare [28.6%]; Rayshon Thompson [28.6%]; Yuqin Luo [28.6%] | 40h | 1,468.57 |
| 253 | 5.10.2 | Create a draft of the final report | 4d | 2021-07-14 | 2021-07-19 | 252 | 0d | Nikita Dongare [400%] | 80h | 3,360 |
| 254 | 5.10.3 | Review the draft with the stakeholders | 1d | 2021-07-19 | 2021-07-20 | 253 | 0d | Adam Alberts [10%]; Amy Holland [10%]; Craig Holland [10%]; Nikita Dongare [10%]; Paulo Maina [10%]; Tony Darin [10%] | 3h | 21 |
| 255 | 5.10.4 | Rework the report if any changes are required | 3d | 2021-07-20 | 2021-07-21 | 254 | 0d | Arlene Bradshaw [23.8%]; John Swenny [23.8%]; Mia Bolivar [23.8%]; Naina Shukla [23.8%]; Nikita Dongare [23.8%]; Rayshon Thompson [23.8%]; Yuqin Luo [23.8%] | 25h | 917.86 |
| 256 | 5.10.5 | Approval of the final report by the stakeholders | 1d | 2021-07-21 | 2021-07-22 | 255 | 0d | Adam Alberts [3.3%]; Amy Holland [3.3%]; Craig Holland [3.3%]; Nikita Dongare [3.3%]; Paulo Maina [3.3%]; Tony Darin [3.3%] | 1h | 7 |
| 257 | 5.10.6 | Submit the final report | 1d | 2021-07-22 | 2021-07-23 | 256 | 0d | Adam Alberts [6.7%]; Nikita Dongare [6.7%]; Sonya Hernandez [6.7%]; Enterprise Software License - Final Payment upon completing fleet rollout | 1h | 15,014 |
| 258 | 6 | **Project Closure** | 367.56d | 2020-09-08 | 2021-07-28 |  | 0d |  | 443h | 14,947.07 |
| 259 | 6.1 | **Requirement check** | 1d | 2021-07-23 | 2021-07-23 |  | 0d |  | 2h | 84 |
| 260 | 6.1.1 | Check whether all the requirements and deliverables are executed according to the project scope | 1d | 2021-07-23 | 2021-07-23 | 257 | 0d | Nikita Dongare [40%] | 2h | 84 |
| 261 | 6.2 | **Meeting with stakeholders** | 2d | 2021-07-23 | 2021-07-27 |  | 0d |  | 6h | 252 |
| 262 | 6.2.1 | Presentation of the final project | 1d | 2021-07-23 | 2021-07-26 | 260 | 0d | Nikita Dongare [60%] | 3h | 126 |
| 263 | 6.2.2 | Get formal acceptance from the stakeholders regarding project expectations | 1d | 2021-07-26 | 2021-07-27 | 262 | 0d | Nikita Dongare [60%] | 3h | 126 |
| 264 | 6.3 | **Project closure report** | 2d | 2021-07-27 | 2021-07-28 |  | 0d |  | 10h | 420 |
| 265 | 6.3.1 | Create a final report including all deliverables, time required to complete the project, resources used and budget | 2d | 2021-07-27 | 2021-07-28 | 263 | 0d | Nikita Dongare | 10h | 420 |
| 266 | 6.4 | Approval and closure of the project | 1d | 2021-07-28 | 2021-07-28 | 264 | 0d | Adam Alberts [10%]; Amy Holland [10%]; Craig Holland [10%]; Tony Darin [10%] | 2h |  |
| 267 | 6.5 | <New Task> | 6.6d | 2020-09-08 | 2020-10-19 |  | 320.36d |  |  |  |

| ID | WBS | Task | Duration | Start | Finish | Total slack | Constraint | Resources | Work | Cost |
| --- | --- | --- | --- | --- | --- | --- | --- | --- | --- | --- |
| 270 | 6.6 | **Weekly Meeting** | 359.4d | 2020-09-11 | 2021-07-26 | 3.35d |  |  | 423h | 14,191.07 |
| 271 | 6.6.1 | Weekly Meeting 1 | 1d | 2020-09-14 | 2020-09-14 | 360.16d | start no earlier than 2020-09-14 | Arlene Bradshaw [14.1%]; Faythe Scheidecker [14.1%]; John Swenny [14.1%]; Mia Bolivar [14.1%]; Naina Shukla [14.1%]; Rayshon Thompson [14.1%]; Yuqin Luo [14.1%]; Nikita Dongare [61.5%] | 8h | 300.13 |
| 272 | 6.6.2 | Weekly Meeting 2 | 1d | 2020-09-21 | 2020-09-21 | 352.15d | start no earlier than 2020-09-21 | Arlene Bradshaw [14%]; Faythe Scheidecker [14%]; John Swenny [14%]; Mia Bolivar [14%]; Naina Shukla [14%]; Rayshon Thompson [14%]; Yuqin Luo [14%]; Nikita Dongare [62%] | 8h | 300.13 |
| 273 | 6.6.3 | Weekly Meeting 3 | 1d | 2020-09-28 | 2020-09-28 | 344.15d | start no earlier than 2020-09-28 | Arlene Bradshaw [14%]; Faythe Scheidecker [14%]; John Swenny [14%]; Mia Bolivar [14%]; Naina Shukla [14%]; Rayshon Thompson [14%]; Yuqin Luo [14%]; Nikita Dongare [62%] | 8h | 300.13 |
| 274 | 6.6.4 | Weekly Meeting 4 | 1d | 2020-10-05 | 2020-10-05 | 336.15d | start no earlier than 2020-10-05 | Arlene Bradshaw [14%]; Faythe Scheidecker [14%]; John Swenny [14%]; Mia Bolivar [14%]; Naina Shukla [14%]; Rayshon Thompson [14%]; Yuqin Luo [14%]; Nikita Dongare [62%] | 8h | 300.13 |
| 275 | 6.6.5 | Weekly Meeting 5 | 1d | 2020-10-12 | 2020-10-12 | 328.15d | start no earlier than 2020-10-12 | Arlene Bradshaw [14%]; Faythe Scheidecker [14%]; John Swenny [14%]; Mia Bolivar [14%]; Naina Shukla [14%]; Rayshon Thompson [14%]; Yuqin Luo [14%]; Nikita Dongare [62%] | 8h | 300.13 |
| 276 | 6.6.6 | Weekly Meeting 6 | 1d | 2020-10-19 | 2020-10-19 | 320.15d | start no earlier than 2020-10-19 | Arlene Bradshaw [14%]; Faythe Scheidecker [14%]; John Swenny [14%]; Mia Bolivar [14%]; Naina Shukla [14%]; Rayshon Thompson [14%]; Yuqin Luo [14%]; Nikita Dongare [62%] | 8h | 300.13 |
| 277 | 6.6.7 | Weekly Meeting 7 | 1d | 2020-10-26 | 2020-10-26 | 312.15d | start no earlier than 2020-10-26 | Arlene Bradshaw [14%]; Faythe Scheidecker [14%]; John Swenny [14%]; Mia Bolivar [14%]; Naina Shukla [14%]; Rayshon Thompson [14%]; Yuqin Luo [14%]; Nikita Dongare [62%] | 8h | 300.13 |
| 278 | 6.6.8 | Weekly Meeting 8 | 1d | 2020-11-02 | 2020-11-02 | 302.55d | start no earlier than 2020-11-02 | Arlene Bradshaw [14%]; Faythe Scheidecker [14%]; John Swenny [14%]; Mia Bolivar [14%]; Naina Shukla [14%]; Rayshon Thompson [14%]; Yuqin Luo [14%]; Nikita Dongare [62%] | 8h | 300.13 |
| 279 | 6.6.9 | Weekly Meeting 9 | 1d | 2020-11-09 | 2020-11-09 | 294.55d | start no earlier than 2020-11-09 | Arlene Bradshaw [14%]; Faythe Scheidecker [14%]; John Swenny [14%]; Mia Bolivar [14%]; Naina Shukla [14%]; Rayshon Thompson [14%]; Yuqin Luo [14%]; Nikita Dongare [62%] | 8h | 300.13 |
| 280 | 6.6.10 | Weekly Meeting 10 | 1d | 2020-11-16 | 2020-11-16 | 288.15d | start no earlier than 2020-11-16 | Arlene Bradshaw [14%]; Faythe Scheidecker [14%]; John Swenny [14%]; Mia Bolivar [14%]; Naina Shukla [14%]; Rayshon Thompson [14%]; Yuqin Luo [14%]; Nikita Dongare [62%] | 8h | 300.13 |
| 281 | 6.6.11 | Weekly Meeting 11 | 1d | 2020-11-23 | 2020-11-23 | 280.15d | start no earlier than 2020-11-23 | Arlene Bradshaw [14%]; Faythe Scheidecker [14%]; John Swenny [14%]; Mia Bolivar [14%]; Naina Shukla [14%]; Rayshon Thompson [14%]; Yuqin Luo [14%]; Nikita Dongare [62%] | 8h | 300.13 |
| 282 | 6.6.12 | Weekly Meeting 12 | 1d | 2020-11-30 | 2020-11-30 | 273.75d | start no earlier than 2020-11-30 | Arlene Bradshaw [14%]; Faythe Scheidecker [14%]; John Swenny [14%]; Mia Bolivar [14%]; Naina Shukla [14%]; Rayshon Thompson [14%]; Yuqin Luo [14%]; Nikita Dongare [62%] | 8h | 300.13 |
| 283 | 6.6.13 | Weekly Meeting 13 | 1d | 2020-12-07 | 2020-12-07 | 265.75d | start no earlier than 2020-12-07 | Arlene Bradshaw [14%]; Faythe Scheidecker [14%]; John Swenny [14%]; Mia Bolivar [14%]; Naina Shukla [14%]; Rayshon Thompson [14%]; Yuqin Luo [14%]; Nikita Dongare [62%] | 8h | 300.13 |
| 284 | 6.6.14 | Weekly Meeting 14 | 1d | 2020-12-14 | 2020-12-14 | 257.75d | start no earlier than 2020-12-14 | Arlene Bradshaw [14%]; Faythe Scheidecker [14%]; John Swenny [14%]; Mia Bolivar [14%]; Naina Shukla [14%]; Rayshon Thompson [14%]; Yuqin Luo [14%]; Nikita Dongare [62%] | 8h | 300.13 |
| 285 | 6.6.15 | Weekly Meeting 15 | 1d | 2020-12-21 | 2020-12-21 | 249.75d | start no earlier than 2020-12-21 | Arlene Bradshaw [14%]; Faythe Scheidecker [14%]; John Swenny [14%]; Mia Bolivar [14%]; Naina Shukla [14%]; Rayshon Thompson [14%]; Yuqin Luo [14%]; Nikita Dongare [62%] | 8h | 300.13 |
| 286 | 6.6.16 | Weekly Meeting 16 | 1d | 2020-12-28 | 2020-12-28 | 243.35d | start no earlier than 2020-12-28 | Arlene Bradshaw [14%]; Faythe Scheidecker [14%]; John Swenny [14%]; Mia Bolivar [14%]; Naina Shukla [14%]; Rayshon Thompson [14%]; Yuqin Luo [14%]; Nikita Dongare [62%] | 8h | 300.13 |
| 287 | 6.6.17 | Weekly Meeting 17 | 1d | 2021-01-04 | 2021-01-04 | 235.35d | start no earlier than 2021-01-04 | Arlene Bradshaw [14%]; Faythe Scheidecker [14%]; John Swenny [14%]; Mia Bolivar [14%]; Naina Shukla [14%]; Rayshon Thompson [14%]; Yuqin Luo [14%]; Nikita Dongare [62%] | 8h | 300.13 |
| 288 | 6.6.18 | Weekly Meeting 18 | 1d | 2021-01-11 | 2021-01-11 | 227.35d | start no earlier than 2021-01-11 | Arlene Bradshaw [14%]; Faythe Scheidecker [14%]; John Swenny [14%]; Mia Bolivar [14%]; Naina Shukla [14%]; Rayshon Thompson [14%]; Yuqin Luo [14%]; Nikita Dongare [62%] | 8h | 300.13 |
| 289 | 6.6.19 | Weekly Meeting 19 | 1d | 2021-01-18 | 2021-01-18 | 219.35d | start no earlier than 2021-01-18 | Arlene Bradshaw [14%]; Faythe Scheidecker [14%]; John Swenny [14%]; Mia Bolivar [14%]; Naina Shukla [14%]; Rayshon Thompson [14%]; Yuqin Luo [14%]; Nikita Dongare [62%] | 8h | 300.13 |
| 290 | 6.6.20 | Weekly Meeting 20 | 1d | 2021-01-25 | 2021-01-25 | 211.35d | start no earlier than 2021-01-25 | Arlene Bradshaw [14%]; Faythe Scheidecker [14%]; John Swenny [14%]; Mia Bolivar [14%]; Naina Shukla [14%]; Rayshon Thompson [14%]; Yuqin Luo [14%]; Nikita Dongare [62%] | 8h | 300.13 |
| 291 | 6.6.21 | Weekly Meeting 21 | 1d | 2021-02-01 | 2021-02-01 | 203.35d | start no earlier than 2021-02-01 | Arlene Bradshaw [14%]; Faythe Scheidecker [14%]; John Swenny [14%]; Mia Bolivar [14%]; Naina Shukla [14%]; Rayshon Thompson [14%]; Yuqin Luo [14%]; Nikita Dongare [62%] | 8h | 300.13 |
| 292 | 6.6.22 | Weekly Meeting 22 | 1d | 2021-02-08 | 2021-02-08 | 195.35d | start no earlier than 2021-02-08 | Arlene Bradshaw [14%]; Faythe Scheidecker [14%]; John Swenny [14%]; Mia Bolivar [14%]; Naina Shukla [14%]; Rayshon Thompson [14%]; Yuqin Luo [14%]; Nikita Dongare [62%] | 8h | 300.13 |
| 293 | 6.6.23 | Weekly Meeting 23 | 1d | 2021-02-15 | 2021-02-15 | 187.35d | start no earlier than 2021-02-15 | Arlene Bradshaw [14%]; Faythe Scheidecker [14%]; John Swenny [14%]; Mia Bolivar [14%]; Naina Shukla [14%]; Rayshon Thompson [14%]; Yuqin Luo [14%]; Nikita Dongare [62%] | 8h | 300.13 |
| 294 | 6.6.24 | Weekly Meeting 24 | 1d | 2021-02-22 | 2021-02-22 | 179.35d | start no earlier than 2021-02-22 | Arlene Bradshaw [14%]; Faythe Scheidecker [14%]; John Swenny [14%]; Mia Bolivar [14%]; Naina Shukla [14%]; Rayshon Thompson [14%]; Yuqin Luo [14%]; Nikita Dongare [62%] | 8h | 300.13 |
| 295 | 6.6.25 | Weekly Meeting 25 | 1d | 2021-03-01 | 2021-03-01 | 171.35d | start no earlier than 2021-03-01 | Arlene Bradshaw [14%]; Faythe Scheidecker [14%]; John Swenny [14%]; Mia Bolivar [14%]; Naina Shukla [14%]; Rayshon Thompson [14%]; Yuqin Luo [14%]; Nikita Dongare [62%] | 8h | 300.13 |
| 296 | 6.6.26 | Weekly Meeting 26 | 1d | 2021-03-08 | 2021-03-08 | 163.6d | start no earlier than 2021-03-08 | Arlene Bradshaw [14%]; Faythe Scheidecker [14%]; John Swenny [14%]; Mia Bolivar [14%]; Naina Shukla [14%]; Rayshon Thompson [14%]; Yuqin Luo [14%]; Nikita Dongare [62%] | 8h | 300.13 |
| 297 | 6.6.27 | Weekly Meeting 27 | 1d | 2021-03-15 | 2021-03-15 | 155.6d | start no earlier than 2021-03-15 | Arlene Bradshaw [14%]; Faythe Scheidecker [14%]; John Swenny [14%]; Mia Bolivar [14%]; Naina Shukla [14%]; Rayshon Thompson [14%]; Yuqin Luo [14%]; Nikita Dongare [62%] | 8h | 300.13 |
| 298 | 6.6.28 | Weekly Meeting 28 | 1d | 2021-03-22 | 2021-03-22 | 147.6d | start no earlier than 2021-03-22 | Arlene Bradshaw [14%]; Faythe Scheidecker [14%]; John Swenny [14%]; Mia Bolivar [14%]; Naina Shukla [14%]; Rayshon Thompson [14%]; Yuqin Luo [14%]; Nikita Dongare [62%] | 8h | 300.13 |
| 299 | 6.6.29 | Weekly Meeting 29 | 1d | 2021-03-29 | 2021-03-29 | 139.6d | start no earlier than 2021-03-29 | Arlene Bradshaw [14%]; Faythe Scheidecker [14%]; John Swenny [14%]; Mia Bolivar [14%]; Naina Shukla [14%]; Rayshon Thompson [14%]; Yuqin Luo [14%]; Nikita Dongare [62%] | 8h | 300.13 |
| 300 | 6.6.30 | Weekly Meeting 30 | 1d | 2021-04-05 | 2021-04-05 | 131.6d | start no earlier than 2021-04-05 | Arlene Bradshaw [14%]; Faythe Scheidecker [14%]; John Swenny [14%]; Mia Bolivar [14%]; Naina Shukla [14%]; Rayshon Thompson [14%]; Yuqin Luo [14%]; Nikita Dongare [62%] | 8h | 300.13 |
| 301 | 6.6.31 | Weekly Meeting 31 | 1d | 2021-04-12 | 2021-04-12 | 123.6d | start no earlier than 2021-04-12 | Arlene Bradshaw [14%]; Faythe Scheidecker [14%]; John Swenny [14%]; Mia Bolivar [14%]; Naina Shukla [14%]; Rayshon Thompson [14%]; Yuqin Luo [14%]; Nikita Dongare [62%] | 8h | 300.13 |
| 302 | 6.6.32 | Weekly Meeting 32 | 1d | 2021-04-19 | 2021-04-19 | 115.6d | start no earlier than 2021-04-19 | Arlene Bradshaw [14%]; Faythe Scheidecker [14%]; John Swenny [14%]; Mia Bolivar [14%]; Naina Shukla [14%]; Rayshon Thompson [14%]; Yuqin Luo [14%]; Nikita Dongare [62%] | 8h | 300.13 |
| 303 | 6.6.33 | Weekly Meeting 33 | 1d | 2021-04-26 | 2021-04-26 | 107.6d | start no earlier than 2021-04-26 | Arlene Bradshaw [14%]; Faythe Scheidecker [14%]; John Swenny [14%]; Mia Bolivar [14%]; Naina Shukla [14%]; Rayshon Thompson [14%]; Yuqin Luo [14%]; Nikita Dongare [62%] | 8h | 300.13 |
| 304 | 6.6.34 | Weekly Meeting 34 | 1d | 2021-05-03 | 2021-05-03 | 99.6d | start no earlier than 2021-05-03 | Arlene Bradshaw [14%]; Faythe Scheidecker [14%]; John Swenny [14%]; Mia Bolivar [14%]; Naina Shukla [14%]; Rayshon Thompson [14%]; Yuqin Luo [14%]; Nikita Dongare [62%] | 8h | 300.13 |
| 305 | 6.6.35 | Weekly Meeting 35 | 1d | 2021-05-10 | 2021-05-10 | 91.6d | start no earlier than 2021-05-10 | Arlene Bradshaw [14%]; Faythe Scheidecker [14%]; John Swenny [14%]; Mia Bolivar [14%]; Naina Shukla [14%]; Rayshon Thompson [14%]; Yuqin Luo [14%]; Nikita Dongare [62%] | 8h | 300.13 |
| 306 | 6.6.36 | Weekly Meeting 36 | 1d | 2021-05-17 | 2021-05-17 | 83.6d | start no earlier than 2021-05-17 | Arlene Bradshaw [14%]; Faythe Scheidecker [14%]; John Swenny [14%]; Mia Bolivar [14%]; Naina Shukla [14%]; Rayshon Thompson [14%]; Yuqin Luo [14%]; Nikita Dongare [62%] | 8h | 300.13 |
| 307 | 6.6.37 | Weekly Meeting 37 | 1d | 2021-05-24 | 2021-05-24 | 75.6d | start no earlier than 2021-05-24 | Arlene Bradshaw [14%]; Faythe Scheidecker [14%]; John Swenny [14%]; Mia Bolivar [14%]; Naina Shukla [14%]; Rayshon Thompson [14%]; Yuqin Luo [14%]; Nikita Dongare [62%] | 8h | 300.13 |
| 308 | 6.6.38 | Weekly Meeting 38 | 1d | 2021-05-31 | 2021-05-31 | 67.6d | start no earlier than 2021-05-31 | Arlene Bradshaw [14%]; Faythe Scheidecker [14%]; John Swenny [14%]; Mia Bolivar [14%]; Naina Shukla [14%]; Rayshon Thompson [14%]; Yuqin Luo [14%]; Nikita Dongare [62%] | 8h | 300.13 |
| 309 | 6.6.39 | Weekly Meeting 39 | 1d | 2021-06-07 | 2021-06-07 | 59.6d | start no earlier than 2021-06-07 | Arlene Bradshaw [14%]; Faythe Scheidecker [14%]; John Swenny [14%]; Mia Bolivar [14%]; Naina Shukla [14%]; Rayshon Thompson [14%]; Yuqin Luo [14%]; Nikita Dongare [62%] | 8h | 300.13 |
| 310 | 6.6.40 | Weekly Meeting 40 | 1d | 2021-06-14 | 2021-06-14 | 51.6d | start no earlier than 2021-06-14 | Arlene Bradshaw [14%]; Faythe Scheidecker [14%]; John Swenny [14%]; Mia Bolivar [14%]; Naina Shukla [14%]; Rayshon Thompson [14%]; Yuqin Luo [14%]; Nikita Dongare [62%] | 8h | 300.13 |
| 311 | 6.6.41 | Weekly Meeting 41 | 1d | 2021-06-21 | 2021-06-21 | 43.6d | start no earlier than 2021-06-21 | Arlene Bradshaw [14%]; Faythe Scheidecker [14%]; John Swenny [14%]; Mia Bolivar [14%]; Naina Shukla [14%]; Rayshon Thompson [14%]; Yuqin Luo [14%]; Nikita Dongare [62%] | 8h | 300.13 |
| 312 | 6.6.42 | Weekly Meeting 42 | 1d | 2021-06-28 | 2021-06-28 | 35.6d | start no earlier than 2021-06-28 | Arlene Bradshaw [14%]; Faythe Scheidecker [14%]; John Swenny [14%]; Mia Bolivar [14%]; Naina Shukla [14%]; Rayshon Thompson [14%]; Yuqin Luo [14%]; Nikita Dongare [62%] | 8h | 300.13 |
| 313 | 6.6.43 | Weekly Meeting 43 | 1d | 2021-07-05 | 2021-07-05 | 27.6d | start no earlier than 2021-07-05 | Arlene Bradshaw [14%]; Faythe Scheidecker [14%]; John Swenny [14%]; Mia Bolivar [14%]; Naina Shukla [14%]; Rayshon Thompson [14%]; Yuqin Luo [14%]; Nikita Dongare [62%] | 8h | 300.13 |
| 314 | 6.6.44 | Weekly Meeting 44 | 1d | 2021-07-12 | 2021-07-12 | 19.6d | start no earlier than 2021-07-12 | Arlene Bradshaw [14%]; Faythe Scheidecker [14%]; John Swenny [14%]; Mia Bolivar [14%]; Naina Shukla [14%]; Rayshon Thompson [14%]; Yuqin Luo [14%]; Nikita Dongare [62%] | 8h | 300.13 |
| 315 | 6.6.45 | Weekly Meeting 45 | 1d | 2021-07-19 | 2021-07-19 | 11.6d | start no earlier than 2021-07-19 | Arlene Bradshaw [14%]; Faythe Scheidecker [14%]; John Swenny [14%]; Mia Bolivar [14%]; Naina Shukla [14%]; Rayshon Thompson [14%]; Yuqin Luo [14%]; Nikita Dongare [62%] | 8h | 300.13 |
| 316 | 6.6.46 | Weekly Meeting 46 | 1d | 2021-07-26 | 2021-07-26 | 3.6d | start no earlier than 2021-07-26 | Arlene Bradshaw [14%]; Faythe Scheidecker [14%]; John Swenny [14%]; Mia Bolivar [14%]; Naina Shukla [14%]; Rayshon Thompson [14%]; Yuqin Luo [14%]; Nikita Dongare [62%] | 8h | 300.13 |

| ID | WBS | Task | Duration | Start | Finish | Total slack | Constraint | Resources | Work | Cost |
| --- | --- | --- | --- | --- | --- | --- | --- | --- | --- | --- |
| 318 | 6.6.47 | **Monthly Meeting** | 341.8d | 2020-09-11 | 2021-07-09 | 20.96d |  |  | 55h | 385 |
| 319 | 6.6.47.1 | Monthly Meeting 1 | 1d | 2020-09-11 | 2020-09-11 | 361.76d | start no earlier than 2020-09-11 | Adam Alberts [16.7%]; Amy Holland [16.7%]; Craig Holland [16.7%]; Nikita Dongare [16.7%]; Sonya Hernandez [16.7%]; Tony Darin [16.7%] | 5h | 35 |
| 320 | 6.6.47.2 | Monthly Meeting 2 | 1d | 2020-10-09 | 2020-10-09 | 329.76d | start no earlier than 2020-10-09 | Adam Alberts [16.7%]; Amy Holland [16.7%]; Craig Holland [16.7%]; Nikita Dongare [16.7%]; Sonya Hernandez [16.7%]; Tony Darin [16.7%] | 5h | 35 |
| 321 | 6.6.47.3 | Monthly Meeting 3 | 1d | 2020-11-13 | 2020-11-13 | 289.76d | start no earlier than 2020-11-13 | Adam Alberts [16.7%]; Amy Holland [16.7%]; Craig Holland [16.7%]; Nikita Dongare [16.7%]; Sonya Hernandez [16.7%]; Tony Darin [16.7%] | 5h | 35 |
| 322 | 6.6.47.4 | Monthly Meeting 4 | 1d | 2020-12-11 | 2020-12-11 | 259.36d | start no earlier than 2020-12-11 | Adam Alberts [16.7%]; Amy Holland [16.7%]; Craig Holland [16.7%]; Nikita Dongare [16.7%]; Sonya Hernandez [16.7%]; Tony Darin [16.7%] | 5h | 35 |
| 323 | 6.6.47.5 | Monthly Meeting 5 | 1d | 2021-01-08 | 2021-01-08 | 228.96d | start no earlier than 2021-01-08 | Adam Alberts [16.7%]; Amy Holland [16.7%]; Craig Holland [16.7%]; Nikita Dongare [16.7%]; Sonya Hernandez [16.7%]; Tony Darin [16.7%] | 5h | 35 |
| 324 | 6.6.47.6 | Monthly Meeting 6 | 1d | 2021-02-12 | 2021-02-12 | 188.96d | start no earlier than 2021-02-12 | Adam Alberts [16.7%]; Amy Holland [16.7%]; Craig Holland [16.7%]; Nikita Dongare [16.7%]; Sonya Hernandez [16.7%]; Tony Darin [16.7%] | 5h | 35 |
| 325 | 6.6.47.7 | Monthly Meeting 7 | 1d | 2021-03-12 | 2021-03-12 | 157.2d | start no earlier than 2021-03-12 | Adam Alberts [16.7%]; Amy Holland [16.7%]; Craig Holland [16.7%]; Nikita Dongare [16.7%]; Sonya Hernandez [16.7%]; Tony Darin [16.7%] | 5h | 35 |
| 326 | 6.6.47.8 | Monthly Meeting 8 | 1d | 2021-04-09 | 2021-04-09 | 125.2d | start no earlier than 2021-04-09 | Adam Alberts [16.7%]; Amy Holland [16.7%]; Craig Holland [16.7%]; Nikita Dongare [16.7%]; Sonya Hernandez [16.7%]; Tony Darin [16.7%] | 5h | 35 |
| 327 | 6.6.47.9 | Monthly Meeting 9 | 1d | 2021-05-14 | 2021-05-14 | 85.2d | start no earlier than 2021-05-14 | Adam Alberts [16.7%]; Amy Holland [16.7%]; Craig Holland [16.7%]; Nikita Dongare [16.7%]; Sonya Hernandez [16.7%]; Tony Darin [16.7%] | 5h | 35 |
| 328 | 6.6.47.10 | Monthly Meeting 10 | 1d | 2021-06-11 | 2021-06-11 | 53.2d | start no earlier than 2021-06-11 | Adam Alberts [16.7%]; Amy Holland [16.7%]; Craig Holland [16.7%]; Nikita Dongare [16.7%]; Sonya Hernandez [16.7%]; Tony Darin [16.7%] | 5h | 35 |
| 329 | 6.6.47.11 | Monthly Meeting 11 | 1d | 2021-07-09 | 2021-07-09 | 21.2d | start no earlier than 2021-07-09 | Adam Alberts [16.7%]; Amy Holland [16.7%]; Craig Holland [16.7%]; Nikita Dongare [16.7%]; Sonya Hernandez [16.7%]; Tony Darin [16.7%] | 5h | 35 |
